# gowno zpi

Schedule from MS Project, 2018-10-03 to 2019-08-23, costs in zł, A marks actual dates.

## Calendars

- Standardowy: Mon-Fri 09:00-13:00, 14:00-18:00; Sat-Sun off.

## Resources

| Resource | Group | Rate |
| --- | --- | --- |
| Licencje | Inne |  |
| Publikacje | Inne |  |
| Komputer Stacjonarny | Materiał | 3000 |
| Laptop | Materiał | 4000 |
| Akcesoria elektroniczne | Materiał | 500 |
| Tablica Multimedialna | Materiał | 2500 |
| Project Manager | Team | 70 |
| Graphic Designer | Team | 30 |
| iOS Developer | Team | 30 |
| Android Developoer | Team | 30 |
| Data Scientist | Team | 80 |
| Tester | Team | 25 |
| Office Manager | Team | 20 |
| Backend Developer | Team | 30 |
| Dev Ops | Team | 30 |

## Schedule

| ID | WBS | Task | Type | Duration | Start | Finish | Predecessors | Complete | Remaining | Total slack | Resources | Work | Actual work | Cost | Actual cost |
| --- | --- | --- | --- | --- | --- | --- | --- | --- | --- | --- | --- | --- | --- | --- | --- |
| 1 | 1 | **Faza I - Analiza wymagań** |  | 113d | 2018-10-03 A | 2019-03-08 A |  | 100% |  |  |  | 472h | 472h | 24,080 | 24,080 |
| 2 | 1.1 | Organizacja projektu | manual | 10d | 2018-10-03 A | 2018-10-16 A |  | 100% |  |  | Project Manager | 80h | 80h | 5,600 | 5,600 |
| 3 | 1.2 | Przygotowanie wstępnej dokumentacji wymagań | manual | 6d | 2019-02-14 A | 2019-02-21 A | 2 | 100% |  |  | Project Manager | 48h | 48h | 3,360 | 3,360 |
| 4 | 1.3 | Wykonanie potrzebnych diagramów, kosztorysu | manual | 4d | 2019-02-22 A | 2019-02-27 A | 3 | 100% |  |  | Dev Ops; Office Manager; Project Manager | 96h | 96h | 3,840 | 3,840 |
| 5 | 1.4 | Konsultacja z programistami | manual | 4d | 2019-02-28 A | 2019-03-05 A | 4 | 100% |  |  | Android Developoer; Backend Developer; Data Scientist; Dev Ops; Graphic Designer; iOS Developer; Project Manager | 224h | 224h | 9,600 | 9,600 |
| 6 | 1.5 | Modyfikacja dokumentacji wymagań | manual | 2d | 2019-03-06 A | 2019-03-07 A | 5 | 100% |  |  | Project Manager | 16h | 16h | 1,120 | 1,120 |
| 7 | 1.6 | Protokół odbioru fazy I | milestone, manual | 1d | 2019-03-08 A | 2019-03-08 A | 6 | 100% |  |  | Project Manager | 8h | 8h | 560 | 560 |
| 8 | 2 | **Faza II - Projekt systemu** |  | 23d | 2019-03-11 A | 2019-04-10 A |  | 100% |  |  |  | 224h | 224h | 9,040 | 9,040 |
| 9 | 2.1 | Szkic dokumentacji "Funkcjonalność aplikacji" | manual | 9d | 2019-03-11 A | 2019-03-21 A | 7 | 100% |  |  | Dev Ops | 72h | 72h | 2,160 | 2,160 |
| 10 | 2.2 | Analiza dostępnych rozwiązań | manual | 5d | 2019-03-22 A | 2019-03-28 A | 9 | 100% |  |  | Data Scientist; Dev Ops | 80h | 80h | 4,400 | 4,400 |
| 11 | 2.3 | Specyfikacja wymagań technologicznych | manual | 4d | 2019-03-29 A | 2019-04-03 A | 10 | 100% |  |  | Dev Ops | 32h | 32h | 960 | 960 |
| 12 | 2.4 | Specyfikacja graficznego interfejsu urzytkownika | manual | 2d | 2019-04-04 A | 2019-04-05 A | 11 | 100% |  |  | Dev Ops | 16h | 16h | 480 | 480 |
| 13 | 2.5 | Modyfikacja dokumentacji "Funkcjonalność aplikacji" | manual | 2d | 2019-04-08 A | 2019-04-09 A | 12 | 100% |  |  | Dev Ops | 16h | 16h | 480 | 480 |
| 14 | 2.6 | Protokół odbioru fazy II | milestone, manual | 1d | 2019-04-10 A | 2019-04-10 A | 13 | 100% |  |  | Project Manager | 8h | 8h | 560 | 560 |
| 15 | 3 | **Faza III - Konfiguracja** |  | 7d | 2019-03-11 A | 2019-03-19 |  | 75% | 1.75d | 0d |  | 56h | 42h | 42,020 | 41,339.97 |
| 16 | 3.1 | Przygotowanie miejsca pracy | manual | 3d | 2019-03-11 A | 2019-03-13 A | 7 | 100% |  |  | Office Manager; Akcesoria elektroniczne [900%]; Komputer Stacjonarny [500%]; Laptop [400%]; Tablica Multimedialna [200%] | 24h | 24h | 40,980 | 40,980 |
| 17 | 3.2 | Selekcja narzędzi, technologii, platformy sprzętowej | manual | 2d | 2019-03-14 A | 2019-03-15 A | 16 | 100% |  |  | Office Manager | 16h | 16h | 320 | 320 |
| 18 | 3.3 | Instalacja i konfiguracja środowiska programistycznego | manual | 1d | 2019-03-18 A | 2019-03-18 | 17 | 25% | 0.75d |  | Office Manager | 8h | 2h | 160 | 39.97 |
| 19 | 3.4 | Protokół odbioru fazy III | milestone, manual | 1d | 2019-03-19 | 2019-03-19 | 18 |  |  |  | Project Manager | 8h |  | 560 |  |
| 20 | 4 | **Faza IV - Przygotowanie podstaw aplikacji** |  | 20d | 2019-03-20 | 2019-04-16 |  |  |  | 0d |  | 192h |  | 6,080 |  |
| 21 | 4.1 | **Przygotowanie logiki aplikacji** |  | 8d | 2019-03-20 | 2019-03-29 |  |  |  | 0d |  | 64h |  | 1,920 |  |
| 22 | 4.1.1 | Przygotowanie dokumentacji logiki aplikacji | manual | 2d | 2019-03-20 | 2019-03-21 | 19 |  |  |  | Backend Developer | 16h |  | 480 |  |
| 23 | 4.1.2 | Zdefiniowanie podstawowych funkcji aplikacji | manual | 2d | 2019-03-22 | 2019-03-25 | 22 |  |  |  | Backend Developer | 16h |  | 480 |  |
| 24 | 4.1.3 | Zdefiniowanie zaawansowanych funkcji aplikacji | manual | 4d | 2019-03-26 | 2019-03-29 | 23 |  |  |  | Backend Developer | 32h |  | 960 |  |

| ID | WBS | Task | Type | Duration | Start | Finish | Predecessors | Total slack | Resources | Work | Cost |
| --- | --- | --- | --- | --- | --- | --- | --- | --- | --- | --- | --- |
| 25 | 4.2 | **Przygotowanie projektu graficznego aplikacji** |  | 15d | 2019-03-26 | 2019-04-15 |  | 0d |  | 120h | 3,600 |
| 26 | 4.2.1 | **Główne ekrany aplikacji** |  | 15d | 2019-03-26 | 2019-04-15 |  | 0d |  | 120h | 3,600 |
| 27 | 4.2.1.1 | Projekt widoku "Rejestracja uzytkownika" | manual | 3d | 2019-03-26 | 2019-03-28 | 23 |  | Graphic Designer | 24h | 720 |
| 28 | 4.2.1.2 | Projekt widoku "Nawigacja i samouczek" | manual | 3d | 2019-03-29 | 2019-04-02 | 27 |  | Graphic Designer | 24h | 720 |
| 29 | 4.2.1.3 | Projekt widoku "Personalizacja aplikacji" | manual | 3d | 2019-04-03 | 2019-04-05 | 28 |  | Graphic Designer | 24h | 720 |
| 30 | 4.2.1.4 | Projekt widoku "Wykrywanie pojazdu" | manual | 3d | 2019-04-08 | 2019-04-10 | 29 |  | Graphic Designer | 24h | 720 |
| 31 | 4.2.1.5 | Projekt widoku "Ustawienia i zarządzanie" | manual | 3d | 2019-04-11 | 2019-04-15 | 30 |  | Graphic Designer | 24h | 720 |
| 32 | 4.3 | Protokół odbioru fazy IV | milestone, manual | 1d | 2019-04-16 | 2019-04-16 | 31 |  | Project Manager | 8h | 560 |
| 33 | 5 | **Faza V - Implementacja odpowiednich modułów** |  | 74d | 2019-04-01 | 2019-07-11 |  | 0d |  | 776h | 47,120 |
| 34 | 5.1 | **Baza danych** |  | 8d | 2019-04-01 | 2019-04-10 |  | 0d |  | 64h | 5,120 |
| 35 | 5.1.1 | Przygotowanie bazy danych | manual | 5d | 2019-04-01 | 2019-04-05 | 24 |  | Data Scientist | 40h | 3,200 |
| 36 | 5.1.2 | Import dostępnych zdjęć samochodów osobowych i ich opisów | manual | 3d | 2019-04-08 | 2019-04-10 | 35 |  | Data Scientist | 24h | 1,920 |
| 37 | 5.2 | **Uczenie maszynowe** |  | 51d | 2019-04-11 | 2019-06-20 |  | 0d |  | 488h | 34,640 |
| 38 | 5.2.1 | Implementacja algorytmów opartych o analizę obrazu | manual | 21d | 2019-04-11 | 2019-05-09 | 36 |  | Data Scientist | 168h | 13,440 |
| 39 | 5.2.2 | Przygotowanie sieci nieuronowych | manual | 8d | 2019-05-10 | 2019-05-21 | 38 |  | Data Scientist | 64h | 5,120 |
| 40 | 5.2.3 | Trenowanie sieci na podstawie zebranych zdjęć i opisów | manual | 7d | 2019-05-22 | 2019-05-30 | 39 |  | Data Scientist | 56h | 4,480 |
| 41 | 5.2.4 | Testowanie | manual | 10d | 2019-05-31 | 2019-06-13 | 40 |  | Data Scientist; Tester | 160h | 8,400 |
| 42 | 5.2.5 | Analiza i interpretacja wyników | manual | 5d | 2019-06-14 | 2019-06-20 | 41 |  | Data Scientist | 40h | 3,200 |
| 43 | 5.3 | Integracja widoku aplikacji mobilnej z silnikiem rozpoznawania samochodów | manual | 13d | 2019-06-21 | 2019-07-09 | 42 |  | Android Developoer; iOS Developer | 208h | 6,240 |
| 44 | 5.4 | Protokół odbioru fazy V | milestone, manual | 2d | 2019-07-10 | 2019-07-11 | 43 |  | Project Manager | 16h | 1,120 |
| 45 | 6 | **Faza VI - Testowanie** |  | 22d | 2019-07-12 | 2019-08-12 |  | 0d |  | 176h | 5,120 |
| 46 | 6.1 | Przeprowadzenie testów jednostkowych na wszystkich poziomach | manual | 16d | 2019-07-12 | 2019-08-02 | 44 |  | Tester | 128h | 3,200 |
| 47 | 6.2 | Generacja raportów i wyników | manual | 4d | 2019-08-05 | 2019-08-08 | 46 |  | Tester | 32h | 800 |
| 48 | 6.3 | Protokół odbioru fazy VI | milestone, manual | 2d | 2019-08-09 | 2019-08-12 | 47 |  | Project Manager | 16h | 1,120 |

| ID | WBS | Task | Type | Duration | Start | Finish | Predecessors | Total slack | Resources | Work | Cost |
| --- | --- | --- | --- | --- | --- | --- | --- | --- | --- | --- | --- |
| 49 | 7 | **Faza VII - Wdrożenie** |  | 9d | 2019-08-13 | 2019-08-23 |  | 0d |  | 104h | 4,080 |
| 50 | 7.1 | Przygotowanie dokumentacji dla użytkownika | manual | 4d | 2019-08-13 | 2019-08-16 | 48 |  | Backend Developer | 32h | 960 |
| 51 | 7.2 | Przygotowanie dokumentacji dla pracowników | manual | 6d | 2019-08-13 | 2019-08-20 | 48 |  | Dev Ops | 48h | 1,440 |
| 52 | 7.3 | Protokół odbioru fazy VII | manual | 3d | 2019-08-21 | 2019-08-23 | 51 |  | Project Manager | 24h | 1,680 |
